# 中联马来园区DCOM平台项目

Schedule from a web Gantt chart, 2025-12-30 to 2026-04-14.
Saturdays and Sundays are off

## Schedule

| ID | WBS | Task | Type | Duration | Start | Finish | inPeople |
| --- | --- | --- | --- | --- | --- | --- | --- |
| 2 | 1 | DCOM系统合同签订 | fixed start | 12d | 2026-01-01 | 2026-01-16 | 张意&杨玉 |
| 3 | 2 | 项目立项启动及启动会议 |  | 2d | 2026-01-19 | 2026-01-20 | 赵红光 |
| 4 | 3 | DCOM系统硬件设备采购 |  | 20d | 2026-01-19 | 2026-02-13 | 张意&杨玉 |
| 5 | 4 | 硬件设备发货及海运报关 |  | 26d | 2026-02-24 | 2026-03-31 | 张意&杨玉 |
| 6 | 5 | 园区网络施工及设备安装 |  | 10d | 2026-04-01 | 2026-04-14 | 熊瀛 |
| 7 | 6 | 园区网络及设备调试 |  | 5d | 2026-03-16 | 2026-03-20 | 赵红光&熊瀛 |
| 8 | 7 | DCOM平台环境部署 |  | 1d | 2025-12-30 | 2025-12-30 | 谢水根&朱星 |
| 9 | 8 | 机房楼系统交付（1#楼） |  | 1d | 2025-12-30 | 2025-12-30 | 李冲（项目经理） |
| 10 | 9 | 机房楼系统交付（2#楼） |  | 1d | 2025-12-30 | 2025-12-30 | 郝辉（项目经理） |
| 11 | 10 | 机房楼系统交付（3#楼） |  | 1d | 2025-12-30 | 2025-12-30 | 待定 |
| 12 | 11 | 机房楼系统交付（4#楼） |  | 1d | 2025-12-30 | 2025-12-30 | 待定 |
| 13 | 12 | DCOM平台南向数据接入（1#楼） |  | 1d | 2025-12-30 | 2025-12-30 | 赵红光&熊瀛 |
| 14 | 13 | DCOM平台南向数据接入（2#楼） |  | 1d | 2025-12-30 | 2025-12-30 | 赵红光&熊瀛 |
| 15 | 14 | DCOM平台南向数据接入（3#楼） |  | 1d | 2025-12-30 | 2025-12-30 | 赵红光&熊瀛 |
| 16 | 15 | DCOM平台南向数据接入（4#楼） |  | 1d | 2025-12-30 | 2025-12-30 | 赵红光&熊瀛 |
| 17 | 16 | DCOM平台数据上线（1#楼） |  | 1d | 2025-12-30 | 2025-12-30 | 赵红光&熊瀛 |
| 18 | 17 | DCOM平台数据上线（2#楼） |  | 1d | 2025-12-30 | 2025-12-30 | 赵红光&熊瀛 |
| 19 | 18 | DCOM平台数据上线（3#楼） |  | 1d | 2025-12-30 | 2025-12-30 | 赵红光&熊瀛 |
| 20 | 19 | DCOM平台数据上线（4#楼） |  | 1d | 2025-12-30 | 2025-12-30 | 赵红光&熊瀛 |
| 21 | 20 | DCOM北向数据上传（1#楼） |  | 1d | 2025-12-30 | 2025-12-30 | 赵红光&熊瀛 |
| 22 | 21 | DCOM北向数据上传（2#楼） |  | 1d | 2025-12-30 | 2025-12-30 | 赵红光&熊瀛 |
| 23 | 22 | DCOM北向数据上传（3#楼） |  | 1d | 2025-12-30 | 2025-12-30 | 赵红光&熊瀛 |
| 24 | 23 | DCOM北向数据上传（4#楼） |  | 1d | 2025-12-30 | 2025-12-30 | 赵红光&熊瀛 |
| 25 | 24 | DCOM平台北向数据验收 |  | 1d | 2025-12-30 | 2025-12-30 | 赵红光&熊瀛 |
| 26 | 25 | DCOM平台监控功能上线 |  | 1d | 2025-12-30 | 2025-12-30 | 赵红光&谢水根 |
| 27 | 26 | DCOM平台运维功能开发 |  | 1d | 2025-12-30 | 2025-12-30 | 赵红光&谢水根 |
| 28 | 27 | DCOM平台功能阶段性交付 |  | 1d | 2025-12-30 | 2025-12-30 | 赵红光&谢水根 |
| 29 | 28 | DCOM平台验收测试 |  | 1d | 2025-12-30 | 2025-12-30 | 赵红光&谢水根 |
| 30 | 29 | DCOM平台培训及验收 |  | 1d | 2025-12-30 | 2025-12-30 | 赵红光&谢水根 |

Notes:
- 2: 商务跟进
- 3: 完成内部项目立项并组织启动会议，项目正式启动
- 4: 商务跟进
- 5: 商务跟进
- 9: 预计2026/1/30交付
- 13: 按机房楼系统交付（1#楼）后T+7天考虑
- 14: 按机房楼系统交付（2#楼）后T+7天考虑
- 15: 按机房楼系统交付（3#楼）后T+7天考虑
- 16: 按机房楼系统交付（4#楼）后T+7天考虑
- 17: DCOM平台南向数据接入（1#楼）后T+10天考虑
- 21: 按DCOM平台南向数据接入（1#楼）完成T+20天计划，完成北向数据上传的配置及数据推送，数据核对和相关测试
- 22: 按DCOM平台南向数据接入（2#楼）完成T+20天计划，完成北向数据上传的配置及数据推送，数据核对和相关测试
- 23: 按DCOM平台南向数据接入（3#楼）完成T+20天计划，完成北向数据上传的配置及数据推送，数据核对和相关测试
- 24: 按DCOM平台南向数据接入（4#楼）完成T+20天计划，完成北向数据上传的配置及数据推送，数据核对和相关测试
- 25: 按数据北向推送后T+5天计划，完成北向数据治理及数据验收
- 26: 按每栋机房楼数据上线T+5天上线计划，基础监控功能含界面，告警，数据，报表，能耗，容量
- 27: 详见开发任务进度计划表
- 28: 运维功能涉及开发的部分，预计按照3~5个迭代过程分批交付
- 29: 后期根据实际情况协商安排
- 30: 后期根据实际情况协商安排
